# 防火墙替换项目整体周期

Schedule from a web Gantt chart, 2025-08-11 to 2025-08-12.
Saturdays and Sundays are off

## Schedule

| ID | WBS | Task | Duration | Start | Finish | Predecessors | Status |
| --- | --- | --- | --- | --- | --- | --- | --- |
| 2 | 1 | **调研阶段** | 1d | 2025-08-11 | 2025-08-11 |  |  |
| 3 | 1.1 | 调研工作启动会 | 1d | 2025-08-11 | 2025-08-11 |  |  |
| 4 | 1.2 | IDC网络环境调研 | 1d | 2025-08-11 | 2025-08-11 |  |  |
| 5 | 1.3 | 工厂网络环境调研 | 1d | 2025-08-11 | 2025-08-11 |  |  |
| 6 | 2 | **调研资料整理** | 2d | 2025-08-11 | 2025-08-12 |  |  |
| 7 | 2.1 | 调研工作确认会 | 1d | 2025-08-11 | 2025-08-11 |  |  |
| 8 | 2.2 | 方案设计阶段 | 1d | 2025-08-12 | 2025-08-12 | 2 | waiting |
